# Velomobile

How a schedule from MS Project changed from version to version. A marks actual dates.

## Version 1 (data date 2010-01-12, saved 2010-05-24, file Current Gantt.mpp)

Note of the change: Added Velo Project files to SCM

| ID | WBS | Task | Duration | Start | Finish | Predecessors | Complete | Total float | Constraint |
| --- | --- | --- | --- | --- | --- | --- | --- | --- | --- |
| 1 |  | Spring Term | 50d? | 2010-03-30 | 2010-06-07 |  |  | 0d | start no earlier than 2010-03-29 |
| 2 | 2 | **Embedded Controller** | 105.25d? | 2010-01-04 A | 2010-05-31 |  | 69% | 5.75d |  |
| 3 | 2.1 | **Build** | 81d? | 2010-01-04 A | 2010-04-26 |  | 92% | 26.25d |  |
| 4 |  | Research Components | 1d | 2010-01-04 A | 2010-01-04 A |  | 100% |  | start no earlier than 2010-01-04 |
| 5 |  | Submit Component List for Review | 1d? | 2010-01-05 A | 2010-01-05 A | 4 | 100% |  |  |
| 6 |  | Aquire Components | 7d? | 2010-01-06 A | 2010-02-04 A | 5 | 100% |  |  |
| 7 |  | Interface Display | 2d | 2010-03-10 A | 2010-04-09 A | 6 | 100% |  | finish no earlier than 2010-01-15 |
| 8 |  | Interface Bluetooth | 1d | 2010-01-18 A | 2010-01-18 A | 6 | 100% |  |  |
| 9 |  | Interface GPS | 1d | 2010-03-16 A | 2010-03-17 A | 6 | 100% |  |  |
| 10 |  | Interface Camera | 1d | 2010-01-15 A | 2010-01-15 A | 6 | 100% |  |  |
| 11 |  | Interface Hall Effect | 1d | 2010-02-12 A | 2010-02-15 A | 6 | 100% |  | start no earlier than 2010-02-02 |
| 12 |  | Interface AttoPilot | 1d | 2010-02-04 A | 2010-02-05 A | 6 | 100% |  | start no earlier than 2010-02-02 |
| 13 |  | Interface Throttle | 1d | 2010-02-18 A | 2010-02-19 A | 6 | 100% |  | start no earlier than 2010-02-02 |
| 14 |  | Interface PAS Sensor | 1d | 2010-04-23 | 2010-04-23 | 6 |  | 27.25d | start no earlier than 2010-03-29 |
| 15 |  | Interface Brake Sensor | 1d | 2010-04-26 A | 2010-04-26 | 6 | 50% | 25.75d | start no earlier than 2010-03-29 |
| 16 | 2.2 | **Code** | 83.25d | 2010-02-03 A | 2010-05-31 |  | 64% | 5.75d |  |
| 17 |  | Embedded Operating System | 10d | 2010-05-07 A | 2010-05-21 | 3 | 80% | 11.75d |  |
| 18 | 2.2.2 | **Sensor Input** | 40d | 2010-04-05 A | 2010-05-31 A |  | 100% |  |  |
| 19 |  | Revolutions | 2d | 2010-04-07 A | 2010-04-09 A | 11 | 100% |  | start no earlier than 2010-03-29 |
| 20 |  | Battery Levels | 2d | 2010-04-05 A | 2010-04-07 A | 12 | 100% |  | start no earlier than 2010-03-29 |
| 21 |  | Throttle Position | 2d | 2010-05-27 A | 2010-05-31 A | 13 | 100% |  | start no earlier than 2010-03-29 |
| 22 | 2.2.3 | **Calculations** | 26d | 2010-04-14 A | 2010-05-20 |  | 31% | 12.75d |  |
| 23 |  | Velocity | 3d | 2010-04-22 A | 2010-04-27 A | 19 | 100% |  | start no earlier than 2010-03-29 |
| 24 |  | RPM | 4d | 2010-05-14 A | 2010-05-20 | 19 | 25% | 12.75d | start no earlier than 2010-03-29 |
| 25 |  | Battery Life | 6d | 2010-04-14 | 2010-04-22 | 20 |  | 30.5d | start no earlier than 2010-03-29 |
| 26 | 2.2.4 | **Power Assist Control** | 13d | 2010-04-27 A | 2010-05-14 |  | 71% | 16.75d |  |
| 27 |  | Accelerate | 6d | 2010-05-05 A | 2010-05-13 A | 13, 14 | 100% |  | start no earlier than 2010-03-29 |
| 28 |  | Decelerate | 2d | 2010-05-04 A | 2010-05-14 A | 15, 14, 13 | 100% |  | start no earlier than 2010-03-29 |
| 29 |  | Cruise Control | 5d | 2010-04-27 A | 2010-05-04 | 15, 14, 13 | 25% | 24.75d | start no earlier than 2010-03-29 |
| 30 | 2.2.5 | **Embedded Display** | 51.85d | 2010-02-24 A | 2010-05-07 |  | 75% | 21.75d |  |
| 31 |  | Display Velocity | 3d | 2010-02-24 A | 2010-05-07 A | 23 | 100% |  |  |
| 32 |  | Display Battery Level | 3d | 2010-04-30 A | 2010-05-05 A | 20 | 100% |  | start no earlier than 2010-03-29 |
| 33 |  | Display Battery Life | 3d | 2010-04-27 A | 2010-04-30 | 25 | 25% | 26.4d | start no earlier than 2010-03-29 |
| 34 | 2.2.6 | **Bluetooth** | 54.6d | 2010-02-05 A | 2010-04-22 |  | 64% | 27d |  |
| 35 |  | Paring | 7d | 2010-02-05 A | 2010-04-07 A | 8 | 100% |  | start no earlier than 2010-02-02 |
| 36 |  | Initiate DUN &/ PAN | 4d | 2010-04-19 | 2010-04-22 | 35 |  | 27d | start no earlier than 2010-03-29 |
| 37 | 2.2.7 | **Camera** | 22d | 2010-02-03 A | 2010-03-04 A |  | 100% |  |  |
| 38 |  | Setup Device | 5d | 2010-02-03 A | 2010-02-09 A | 10 | 100% |  | start no earlier than 2010-02-02 |
| 39 |  | Read Image | 3d | 2010-03-02 A | 2010-03-04 A | 38 | 100% |  |  |
| 40 | 2.2.8 | **Device Data Stream** | 22.35d | 2010-03-30 A | 2010-04-29 |  | 28% | 27d |  |
| 41 |  | Transmit Telemetry Steam | 7d | 2010-03-30 A | 2010-04-08 | 37 | 48% | 42.35d | start no earlier than 2010-03-29 |
| 42 |  | Transmit Image Stream | 5d | 2010-04-23 | 2010-04-29 | 36, 39 |  | 27d | start no earlier than 2010-03-29 |
| 43 | 3 | **Telemetry Stream** | 27d | 2010-01-04 A | 2010-02-09 A |  | 100% |  |  |
| 44 |  | Create Stream Protocol | 7d | 2010-01-04 A | 2010-02-09 A |  | 100% |  | finish no earlier than 2010-01-12 |
| 45 | 4 | **Telemetry System** | 76.25d | 2010-02-10 A | 2010-05-27 |  | 69% | 7.75d |  |
| 46 | 4.1 | **Telemetry Web Back-End** | 76.25d | 2010-02-10 A | 2010-05-27 |  | 69% | 7.75d |  |
| 47 |  | Build Database | 5d | 2010-02-22 A | 2010-02-26 A |  | 100% |  | start no earlier than 2010-02-02 |
| 48 | 4.1.2 | **Receive Telemetry Streams** | 32d | 2010-02-10 A | 2010-03-25 A |  | 100% |  |  |
| 49 |  | Parse Elements | 5d | 2010-02-10 A | 2010-02-16 A | 44 | 100% |  | start no earlier than 2010-02-02 |
| 50 |  | Determine Element Time | 2d | 2010-02-17 A | 2010-02-18 A | 49 | 100% |  | start no earlier than 2010-02-02 |
| 51 |  | Store Element Data | 2d | 2010-03-24 A | 2010-03-25 A | 49, 50, 47 | 100% |  |  |
| 52 | 4.1.3 | **Responces** | 64.25d | 2010-02-23 A | 2010-05-24 |  | 64% | 10.75d |  |
| 53 |  | Response Abstract Base Class | 5d | 2010-02-23 A | 2010-04-05 | 44 | 90% | 10.75d | start no earlier than 2010-02-02 |
| 54 |  | Valid | 2d | 2010-05-20 | 2010-05-24 | 53 |  | 10.75d | start no earlier than 2010-03-29 |
| 55 |  | Decode Video Frames | 3d | 2010-04-09 | 2010-04-14 | 48 |  | 7.75d | start no earlier than 2010-03-29 |
| 56 |  | Store Video Frame | 3d | 2010-05-24 | 2010-05-27 | 55 |  | 7.75d |  |
| 57 | 5 | **Telemetry Web Front-End** | 73.6d? | 2010-02-17 A | 2010-05-31 |  | 33% | 5d |  |
| 58 |  | Create Device Display Page | 1d | 2010-03-09 A | 2010-03-30 | 47 | 75% | 49.75d |  |
| 59 |  | Create Gauge Abstract Base Class | 2d | 2010-02-17 A | 2010-03-30 |  | 80% | 45.85d | start no earlier than 2010-02-02 |
| 60 | 5.3 | **Display Telemerty Data** | 6.35d? | 2010-04-08 A | 2010-04-16 |  | 18% | 36d |  |
| 61 |  | Build Compass Gauge | 1.5d? | 2010-04-08 A | 2010-04-12 | 59 | 23% | 40.85d | start no earlier than 2010-03-29 |
| 62 |  | Build Voltage Gauge | 1.5d? | 2010-04-09 A | 2010-04-13 | 59 | 23% | 39.85d | start no earlier than 2010-03-29 |
| 63 |  | Build Current Gauge | 4.35d? | 2010-04-12 A | 2010-04-16 | 59 | 14% | 36d | start no earlier than 2010-03-29 |
| 64 | 5.4 | **Management Page** | 13d | 2010-05-10 A | 2010-05-26 |  | 38% | 8d |  |
| 65 |  | Create Security | 5d | 2010-05-17 | 2010-05-21 |  |  | 11d | start no earlier than 2010-05-17 |
| 66 |  | Create Page | 5d | 2010-05-10 A | 2010-05-14 A |  | 100% |  | start no earlier than 2010-05-10 |
| 67 |  | Store Data | 3d | 2010-05-24 | 2010-05-26 |  |  | 8d | start no earlier than 2010-05-24 |
| 68 | 5.5 | **Windowing Outsourcing** | 3d? | 2010-05-27 | 2010-05-31 |  |  | 5d |  |
| 69 |  | Integrate Source Code | 3d? | 2010-05-27 | 2010-05-31 |  |  | 5d | start no earlier than 2010-05-24 |

## Version 2 (data date 2010-01-12, saved 2010-06-02, file Original Gant.mpp)

Note of the change: Added Velo Project files to SCM

Last finish 2010-06-07 → 2010-06-04 (-3d). Complete tasks 27 → 8.

Added:

| ID | Task | Duration | Start | Finish | Constraint |
| --- | --- | --- | --- | --- | --- |
| 1 | Winter Term | 55d? | 2010-02-03 | 2010-04-20 | start no earlier than 2010-02-02 |

Removed: 17 Embedded Operating System; 64 Management Page; 65 Create Security; 66 Create Page; 67 Store Data; 68 Windowing Outsourcing; 69 Integrate Source Code

Changed:

| ID | Task | Start | Finish | Duration | Complete | Total float | Other |
| --- | --- | --- | --- | --- | --- | --- | --- |
| 2 | Spring Term | 2010-03-30 → 2010-03-29 (-1d) | 2010-06-07 → 2010-06-04 (-3d) |  |  |  |  |
| 3 | **Embedded Controller** |  | 2010-05-31 → 2010-03-29 (-63d) | 105.25d? → 61d? | 69% → 26% | 5.75d → 49d |  |
| 4 | **Build** |  | 2010-04-26 → 2010-03-17 (-40d) | 81d? → 52.4d? | 92% → 63% | 26.25d → 57.6d |  |
| 8 | Interface Display | 2010-03-10 A → 2010-03-10 | 2010-04-09 A → 2010-03-12 (-28d) |  | 100% → 0% | none → 60.6d |  |
| 12 | Interface Hall Effect | 2010-02-12 A → 2010-02-12 | 2010-02-15 A → 2010-02-15 |  | 100% → 0% | none → 64d |  |
| 13 | Interface AttoPilot | 2010-02-04 A → 2010-02-04 | 2010-02-05 A → 2010-02-05 |  | 100% → 0% | none → 64d |  |
| 14 | Interface Throttle | 2010-02-18 A → 2010-02-18 | 2010-02-19 A → 2010-02-19 |  | 100% → 0% | none → 52d |  |
| 15 | Interface PAS Sensor | 2010-04-23 → 2010-02-19 (-63d) | 2010-04-23 → 2010-02-22 (-60d) |  |  | 27.25d → 51d | constraint start no earlier than 2010-03-29 → start no earlier than 2010-02-02 |
| 16 | Interface Brake Sensor | 2010-04-26 A → 2010-02-23 (-62d) | 2010-04-26 → 2010-02-24 (-61d) |  | 50% → 0% | 25.75d → 49d | constraint start no earlier than 2010-03-29 → none |
| 17 | **Code** |  | 2010-05-31 → 2010-03-29 (-63d) | 83.25d → 39d | 64% → 14% | 5.75d → 49d |  |
| 18 | **Sensor Input** | 2010-04-05 A → 2010-02-10 (-54d) | 2010-05-31 A → 2010-03-17 (-75d) | 40d → 26d | 100% → 0% | none → 57d |  |
| 19 | Revolutions | 2010-04-07 A → 2010-02-15 (-51d) | 2010-04-09 A → 2010-02-17 (-51d) |  | 100% → 0% | none → 64d | constraint start no earlier than 2010-03-29 → start no earlier than 2010-02-02 |
| 20 | Battery Levels | 2010-04-05 A → 2010-02-10 (-54d) | 2010-04-07 A → 2010-02-11 (-55d) |  | 100% → 0% | none → 64d | constraint start no earlier than 2010-03-29 → start no earlier than 2010-02-02 |
| 21 | Throttle Position | 2010-05-27 A → 2010-03-16 (-72d) | 2010-05-31 A → 2010-03-17 (-75d) |  | 100% → 0% | none → 57d | constraint start no earlier than 2010-03-29 → none |
| 22 | **Calculations** | 2010-04-14 A → 2010-02-12 (-61d) | 2010-05-20 → 2010-03-08 (-73d) | 26d → 17d | 31% → 0% | 12.75d → 64d |  |
| 23 | Velocity | 2010-04-22 A → 2010-02-17 (-64d) | 2010-04-27 A → 2010-02-19 (-67d) | 3d → 2d | 100% → 0% | none → 65.6d | constraint start no earlier than 2010-03-29 → start no earlier than 2010-02-02 |
| 24 | RPM | 2010-05-14 A → 2010-03-04 (-71d) | 2010-05-20 → 2010-03-08 (-73d) | 4d → 3d | 25% → 0% | 12.75d → 64d | constraint start no earlier than 2010-03-29 → none |
| 25 | Battery Life | 2010-04-14 → 2010-02-12 (-61d) | 2010-04-22 → 2010-02-24 (-57d) | 6d → 5d |  | 30.5d → 69d | constraint start no earlier than 2010-03-29 → start no earlier than 2010-02-02 |
| 26 | **Power Assist Control** | 2010-04-27 A → 2010-03-09 (-49d) | 2010-05-14 → 2010-03-29 (-46d) | 13d → 15d | 71% → 0% | 16.75d → 49d |  |
| 27 | Accelerate | 2010-05-05 A → 2010-03-18 (-48d) | 2010-05-13 A → 2010-03-25 (-49d) | 6d → 2d | 100% → 0% | none → 51d | constraint start no earlier than 2010-03-29 → none |
| 28 | Decelerate | 2010-05-04 A → 2010-03-26 (-39d) | 2010-05-14 A → 2010-03-29 (-46d) |  | 100% → 0% | none → 49d | constraint start no earlier than 2010-03-29 → none |
| 29 | Cruise Control | 2010-04-27 A → 2010-03-09 (-49d) | 2010-05-04 → 2010-03-15 (-50d) |  | 25% → 0% | 24.75d → 59d | constraint start no earlier than 2010-03-29 → none |
| 30 | **Embedded Display** | 2010-02-24 A → 2010-02-24 | 2010-05-07 → 2010-03-09 (-59d) | 51.85d → 9d | 75% → 0% | 21.75d → 63.6d |  |
| 31 | Display Velocity | 2010-02-24 A → 2010-02-24 | 2010-05-07 A → 2010-03-04 (-64d) |  | 100% → 0% | none → 66.6d |  |
| 32 | Display Battery Level | 2010-04-30 A → 2010-03-04 (-57d) | 2010-05-05 A → 2010-03-09 (-57d) |  | 100% → 0% | none → 63.6d | constraint start no earlier than 2010-03-29 → none |
| 33 | Display Battery Life | 2010-04-27 A → 2010-02-25 (-61d) | 2010-04-30 → 2010-03-01 (-60d) |  | 25% → 0% | 26.4d → 69d | constraint start no earlier than 2010-03-29 → none |
| 34 | **Bluetooth** |  | 2010-04-22 → 2010-02-17 (-64d) | 54.6d → 8d | 64% → 9% | 27d → 62.6d |  |
| 35 | Paring |  | 2010-04-07 A → 2010-02-12 (-54d) | 7d → 5d | 100% → 12% | none → 60.6d |  |
| 36 | Initiate DUN &/ PAN | 2010-04-19 → 2010-02-15 (-63d) | 2010-04-22 → 2010-02-17 (-64d) | 4d → 2d |  | 27d → 62.6d | constraint start no earlier than 2010-03-29 → start no earlier than 2010-02-02 |
| 37 | **Camera** |  | 2010-03-04 A → 2010-03-04 |  | 100% → 93% | none → 51d |  |
| 38 | Setup Device |  |  |  |  |  | resources Shawn → Dan |
| 39 | Read Image |  | 2010-03-04 A → 2010-03-04 |  | 100% → 80% | none → 51d |  |
| 40 | **Device Data Stream** | 2010-03-30 A → 2010-03-05 (-25d) | 2010-04-29 → 2010-03-25 (-35d) | 22.35d → 15d | 28% → 0% | 27d → 51d |  |
| 41 | Transmit Telemetry Steam | 2010-03-30 A → 2010-03-05 (-25d) | 2010-04-08 → 2010-03-11 (-28d) | 7d → 5d | 48% → 0% | 42.35d → 61d | constraint start no earlier than 2010-03-29 → none |
| 42 | Transmit Image Stream | 2010-04-23 → 2010-03-19 (-35d) | 2010-04-29 → 2010-03-25 (-35d) |  |  | 27d → 51d | constraint start no earlier than 2010-03-29 → none |
| 43 | **Telemetry Stream** |  | 2010-02-09 A → 2010-02-09 |  | 100% → 29% | none → 63.75d |  |
| 44 | Create Stream Protocol |  | 2010-02-09 A → 2010-02-09 |  | 100% → 29% | none → 63.75d |  |
| 45 | **Telemetry System** |  | 2010-05-27 → 2010-03-24 (-64d) | 76.25d → 31d | 69% → 36% | 7.75d → 52d |  |
| 46 | **Telemetry Web Back-End** |  | 2010-05-27 → 2010-03-24 (-64d) | 76.25d → 31d | 69% → 36% | 7.75d → 52d |  |
| 47 | Build Database |  | 2010-02-26 A → 2010-02-26 |  | 100% → 50% | none → 52d |  |
| 48 | **Receive Telemetry Streams** |  | 2010-03-25 A → 2010-03-18 (-7d) | 32d → 27d | 100% → 64% | none → 52d |  |
| 49 | Parse Elements |  | 2010-02-16 A → 2010-02-16 |  | 100% → 75% | none → 60d |  |
| 51 | Store Element Data | 2010-03-24 A → 2010-03-17 (-7d) | 2010-03-25 A → 2010-03-18 (-7d) |  | 100% → 0% | none → 52d |  |
| 52 | **Responces** | 2010-02-23 A → 2010-02-25 (+2d) | 2010-05-24 → 2010-03-03 (-82d) | 64.25d → 5d | 64% → 0% | 10.75d → 67d |  |
| 53 | Response Abstract Base Class | 2010-02-23 A → 2010-02-25 (+2d) | 2010-04-05 → 2010-03-01 (-35d) | 5d → 3d | 90% → 0% | 10.75d → 67d |  |
| 54 | Valid | 2010-05-20 → 2010-03-02 (-79d) | 2010-05-24 → 2010-03-03 (-82d) |  |  | 10.75d → 67d | constraint start no earlier than 2010-03-29 → start no earlier than 2010-02-02 |
| 55 | Decode Video Frames | 2010-04-09 → 2010-03-19 (-21d) | 2010-04-14 → 2010-03-22 (-23d) | 3d → 2d |  | 7.75d → 52d | constraint start no earlier than 2010-03-29 → none |
| 56 | Store Video Frame | 2010-05-24 → 2010-03-23 (-62d) | 2010-05-27 → 2010-03-24 (-64d) | 3d → 2d |  | 7.75d → 52d |  |
| 57 | **Telemetry Web Front-End** |  | 2010-05-31 → 2010-03-16 (-76d) | 73.6d? → 19.6d? | 33% → 11% | 5d → 58d |  |
| 58 | Create Device Display Page |  | 2010-03-30 → 2010-03-12 (-18d) | 1d → 2d | 75% → 50% | 49.75d → 60d |  |
| 59 | Create Gauge Abstract Base Class | 2010-02-17 A → 2010-02-17 | 2010-03-30 → 2010-02-19 (-39d) |  | 80% → 0% | 45.85d → 58d |  |
| 60 | **Display Telemerty Data** | 2010-04-08 A → 2010-02-22 (-45d) | 2010-04-16 → 2010-03-16 (-31d) | 6.35d? → 16.6d? | 18% → 0% | 36d → 58d |  |
| 61 | Build Compass Gauge | 2010-04-08 A → 2010-02-22 (-45d) | 2010-04-12 → 2010-03-01 (-42d) | 1.5d? → 2d? | 23% → 0% | 40.85d → 69d | constraint start no earlier than 2010-03-29 → start no earlier than 2010-02-02 |
| 62 | Build Voltage Gauge | 2010-04-09 A → 2010-03-12 (-28d) | 2010-04-13 → 2010-03-15 (-29d) | 1.5d? → 1.6d? | 23% → 0% | 39.85d → 59d | constraint start no earlier than 2010-03-29 → start no earlier than 2010-02-02 |
| 63 | Build Current Gauge | 2010-04-12 A → 2010-03-15 (-28d) | 2010-04-16 → 2010-03-16 (-31d) | 4.35d? → 1.6d? | 14% → 0% | 36d → 58d | constraint start no earlier than 2010-03-29 → start no earlier than 2010-02-02 |
